# Разработка b&c моб.приложения

Schedule from MS Project, 2024-12-02 to 2026-03-06, status date 2025-10-07, costs in ₽, A marks actual dates.

## Calendars

- мой календарь: Mon-Fri 09:00-13:00, 14:00-18:00; Sat-Sun off. Exceptions (off unless hours are given): 2024-12-28 to 2025-01-08 (новый год), 2025-02-23 (23 февраля), 2025-03-07 (8 марта), 2025-05-01 to 2025-05-04 (майские праздники), 2025-05-09 to 2025-05-11 (день победы), 2025-06-12 (день России), 2025-11-02 to 2025-11-04 (день народного единства).

## Resources

| Resource | Unit | Rate |
| --- | --- | --- |
| Дизайнер |  | 1800 |
| Специалисты по ИБ |  | 2000 |
| Проектный менеджер |  | 5000 |
| Тестировщики |  | 1500 |
| Специалисты по внедрению |  | 2000 |
| Системный-аналитик |  | 1800 |
| Архитекторы |  | 3000 |
| Консультант финансовых услуг |  | 1500 |
| Маркетолог |  | 1500 |
| Бизнес-аналитик |  | 1500 |
| Backend разработчик |  | 2000 |
| Frontend разработчик |  | 1250 |
| Покупка оборудования | шт | 3680000 |

## Schedule

| ID | WBS | Task | Type | Duration | Start | Finish | Predecessors | Complete | Remaining | Actual finish | Baseline start | Baseline finish | Baseline duration | Total slack | Constraint | Resources | Work | Actual work | Cost | Baseline cost | Actual cost | Владелец риска |
| --- | --- | --- | --- | --- | --- | --- | --- | --- | --- | --- | --- | --- | --- | --- | --- | --- | --- | --- | --- | --- | --- | --- |
| 1 | 1 | Решение о разработке принято |  | 1d | 2024-12-02 | 2024-12-02 |  |  |  |  | 2024-12-02 | 2024-12-02 | 0d | 314d | start no earlier than 2024-12-02 | Покупка оборудования [1 шт] |  |  | 3,680,000 |  |  |  |
| 2 | 2 | **Формирование требований** |  | 20d | 2024-12-02 A | 2024-12-27 | 1 | 100% |  | 2025-02-21 | 2024-12-02 | 2024-12-27 | 20d |  |  |  | 1400h | 1400h | 3,968,000 | 3,968,000 | 3,968,000 |  |
| 3 | 2.1 | Анализ существующих бизнес-процессов |  | 15d | 2024-12-02 A | 2024-12-20 A |  | 100% |  |  | 2024-12-02 | 2024-12-20 | 15d |  |  | Бизнес-аналитик | 120h | 120h | 180,000 | 180,000 | 180,000 | Бизнес-аналитик |
| 4 | 2.2 | Определение потребностей компании |  | 5d | 2024-12-23 A | 2024-12-27 A | 3 | 100% |  |  | 2024-12-23 | 2024-12-27 | 5d |  |  | Консультант финансовых услуг; Проектный менеджер | 80h | 80h | 260,000 | 260,000 | 260,000 | Проектный менеджер |
| 5 | 2.3 | Сбор информации о конкурентах |  | 15d | 2024-12-02 A | 2024-12-20 A |  | 100% |  |  | 2024-12-02 | 2024-12-20 | 15d |  |  | Бизнес-аналитик; Маркетолог | 240h | 240h | 360,000 | 360,000 | 360,000 | Бизнес-аналитик |
| 6 | 2.4 | Определение функций приложения | manual | 13d | 2024-12-30 A | 2025-01-24 A | 4, 5 | 100% |  |  | 2024-12-30 | 2025-01-24 | 20d |  |  | Проектный менеджер; Бизнес-аналитик | 320h | 320h | 1,040,000 | 1,040,000 | 1,040,000 | Проектный менеджер |
| 7 | 2.5 | Разработка функциональных требований |  | 20d | 2025-01-27 A | 2025-02-21 A | 6 | 100% |  |  | 2025-01-27 | 2025-02-21 | 20d |  |  | Проектный менеджер; Бизнес-аналитик | 320h | 320h | 1,040,000 | 1,040,000 | 1,040,000 | Проектный менеджер |
| 8 | 2.6 | Разработка НЕ функциональных требований |  | 20d | 2025-01-27 A | 2025-02-21 A | 6 | 100% |  |  | 2025-01-27 | 2025-02-21 | 20d |  |  | Проектный менеджер; Системный-аналитик | 320h | 320h | 1,088,000 | 1,088,000 | 1,088,000 | Проектный менеджер |
| 9 | 2.7 | требования разработаны | milestone | 0d | 2024-12-02 A | 2024-12-02 A | 3, 4, 5, 6, 7, 8 | 100% |  |  | 2024-12-02 | 2024-12-02 | 0d |  |  |  |  |  |  |  |  |  |
| 10 | 3 | **Проектирование мобильного приложения** |  | 71d | 2024-12-27 A | 2025-04-18 A | 2 | 100% |  |  | 2024-12-27 | 2025-04-18 | 80d |  |  |  | 1096h | 1096h | 2,892,000 | 2,892,000 | 2,892,000 |  |
| 11 | 3.1 | Разработка регламентов и шаблонов |  | 15d | 2024-12-30 A | 2025-01-17 A |  | 100% |  |  | 2024-12-30 | 2025-01-17 | 15d |  |  | Проектный менеджер; Бизнес-аналитик | 240h | 240h | 780,000 | 780,000 | 780,000 | Проектный менеджер |
| 12 | 3.2 | Выбор технологического стека |  | 5d | 2025-01-20 A | 2025-01-24 A | 11 | 100% |  |  | 2025-01-20 | 2025-01-24 | 5d |  |  | Архитекторы | 40h | 40h | 120,000 | 120,000 | 120,000 | Архитектор |
| 13 | 3.3 | Разработка архитектурного решения |  | 30d | 2025-01-27 A | 2025-03-07 A | 12 | 100% |  |  | 2025-01-27 | 2025-03-07 | 30d |  |  | Архитекторы | 240h | 240h | 720,000 | 720,000 | 720,000 | Архитектор |
| 14 | 3.4 | Разработка API для взаимодействия с back-end системами банка. |  | 21d | 2025-03-10 A | 2025-04-07 A | 13 | 100% |  |  | 2025-03-10 | 2025-04-07 | 21d |  |  | Backend разработчик; Архитекторы | 336h | 336h | 840,000 | 840,000 | 840,000 | Архитектор |
| 15 | 3.5 | Разработка дизайна, пользовательского интерфейса |  | 30d | 2025-03-10 A | 2025-04-18 A | 13 | 100% |  |  | 2025-03-10 | 2025-04-18 | 30d |  |  | Дизайнер | 240h | 240h | 432,000 | 432,000 | 432,000 | Дизайнер |
| 16 | 3.6 | проектировка окончена | milestone | 0d | 2024-12-27 A | 2024-12-27 A | 11, 12, 13, 14, 15 | 100% |  |  | 2024-12-27 | 2024-12-27 | 0d |  |  |  |  |  |  |  |  |  |
| 17 | 4 | **Реализация** |  | 189d | 2025-04-21 A | 2026-01-16 | 10 | 58% | 79.29d |  | 2025-04-18 | 2026-01-16 | 195d | 0d |  |  | 2120h | 960h | 3,224,000 | 3,224,000 | 1,202,000 |  |
| 18 | 4.1 | **Реализация FRONTENDа** |  | 136d | 2025-04-21 A | 2025-10-31 |  | 85% | 20.4d |  | 2025-04-18 | 2025-10-31 | 140d | 0d |  |  | 1280h | 960h | 1,640,000 | 1,640,000 | 1,202,000 |  |
| 19 | 4.1.1 | Спринт 1: Авторизация и регистрация |  | 20d | 2025-04-21 A | 2025-05-16 |  | 90% | 2d |  | 2025-04-21 | 2025-05-16 | 20d | 119d |  | Frontend разработчик | 160h | 144h | 200,000 | 200,000 | 180,000 | Frontend разработчик |
| 20 | 4.1.2 | Спринт 2: Визуал и навигация |  | 30d | 2025-05-19 A | 2025-06-27 A | 19 | 100% |  |  | 2025-05-19 | 2025-06-27 | 30d |  |  | Frontend разработчик | 240h | 240h | 300,000 | 300,000 | 300,000 | Frontend разработчик |
| 21 | 4.1.3 | Спринт 3: Реализация банковских функций |  | 45d | 2025-06-30 A | 2025-08-29 A | 20 | 100% |  |  | 2025-06-30 | 2025-08-29 | 45d |  |  | Frontend разработчик | 360h | 360h | 450,000 | 450,000 | 450,000 | Frontend разработчик |
| 22 | 4.1.4 | Спринт 4: Подключение функций оплаты |  | 25d | 2025-09-01 A | 2025-10-03 A | 21 | 100% |  |  | 2025-09-01 | 2025-10-03 | 25d |  |  | Frontend разработчик | 200h | 200h | 250,000 | 250,000 | 250,000 | Frontend разработчик |
| 23 | 4.1.5 | Спринт 5: Отладка и тестирование |  | 20d | 2025-10-06 A | 2025-10-31 | 22 | 5% | 19d |  | 2025-10-06 | 2025-10-31 | 20d | 0d |  | Frontend разработчик; Тестировщики | 320h | 16h | 440,000 | 440,000 | 22,000 | Frontend разработчик |
| 24 | 4.1.6 | Frontend реализован | milestone | 0d | 2025-10-31 | 2025-10-31 | 19, 20, 21, 22, 23 |  |  |  | 2025-04-18 | 2025-04-18 | 0d | 0d |  |  |  |  |  |  |  |  |

Notes:
- 3: Описание риска: Превышено время, выделенное на эту задачу
- 4: Описание риска: Проблемы взаимодействия разных участников проекта
- 5: Описание риска: Превышено время, выделенное на эту задачу
- 6: Описание риска: Изменение вводных данных по желанию заказчика
- 7: Описание риска: Превышено время, выделенное на эту задачу
- 8: Описание риска: Превышено время, выделенное на эту задачу
- 11: Описание риска: Превышено время, выделенное на эту задачу
- 12: Описание риска: Недостаточный бюджет/нехватка человеческого или временного ресурса
- 13: Описание риска: Недостаточный бюджет/нехватка человеческого или временного ресурса
- 14: Описание риска: Проблема интеграции системы с банковской системой
- 15: Описание риска: Превышено время, выделенное на эту задачу
- 19: Описание риска: Нарушение безопасности систем
- 20: Описание риска: Превышено время, выделенное на эту задачу
- 21: Описание риска: Неправильно реализованный функционал банковских операций
- 22: Описание риска: Сложность в интеграции сторонних сервисов оплаты
- 23: Описание риска: В системе возникают сбои из-за ошибок разработчиков

| ID | WBS | Task | Type | Duration | Start | Finish | Predecessors | Baseline start | Baseline finish | Baseline duration | Total slack | Constraint | Resources | Work | Cost | Baseline cost | Владелец риска |
| --- | --- | --- | --- | --- | --- | --- | --- | --- | --- | --- | --- | --- | --- | --- | --- | --- | --- |
| 25 | 4.2 | **Реализация платформенной части** |  | 53d | 2025-11-03 | 2026-01-16 | 18 | 2025-10-31 | 2026-01-16 | 55d | 0d |  |  | 840h | 1,584,000 | 1,584,000 |  |
| 26 | 4.2.1 | Создание прототипа дизайнерского решения |  | 10d | 2025-11-03 | 2025-11-14 |  | 2025-11-03 | 2025-11-14 | 10d | 0d |  | Backend разработчик; Дизайнер | 160h | 304,000 | 304,000 | Backend разработчик |
| 27 | 4.2.2 | Настройка интеграции с банковскими системами |  | 5d | 2025-11-17 | 2025-11-21 | 26 | 2025-11-17 | 2025-11-21 | 5d | 0d |  | Backend разработчик | 40h | 80,000 | 80,000 | Backend разработчик |
| 28 | 4.2.3 | Настройка обработки данных |  | 20d | 2025-11-24 | 2025-12-19 | 27 | 2025-11-24 | 2025-12-19 | 20d | 0d |  | Backend разработчик | 160h | 320,000 | 320,000 | Backend разработчик |
| 29 | 4.2.4 | Настройка авторизации и аутентификации пользователей |  | 10d | 2025-11-17 | 2025-11-28 | 26 | 2025-11-17 | 2025-11-28 | 10d | 15d |  | Backend разработчик; Специалисты по ИБ | 160h | 320,000 | 320,000 | Backend разработчик |
| 30 | 4.2.5 | Настройка бизнес-правил и алгоритмов. |  | 20d | 2025-12-22 | 2026-01-16 | 26, 27, 28, 29 | 2025-12-22 | 2026-01-16 | 20d | 0d |  | Backend разработчик; Бизнес-аналитик | 320h | 560,000 | 560,000 | Backend разработчик |
| 31 | 4.2.6 | платформенная часть реализована | milestone | 0d | 2026-01-16 | 2026-01-16 | 26, 27, 28, 29, 30 | 2025-10-31 | 2025-10-31 | 0d | 0d |  |  |  |  |  |  |
| 32 | 5 | Тестирование системы |  | 30d | 2026-01-19 | 2026-02-27 | 17 | 2026-01-19 | 2026-02-27 | 30d | 0d |  | Тестировщики | 240h | 360,000 | 360,000 | Тестировщик |
| 33 | 6 | Развертывание системы |  | 5d | 2026-03-02 | 2026-03-06 | 32 | 2026-03-02 | 2026-03-06 | 5d | 0d | start no earlier than 2016-04-30 | Специалисты по внедрению | 40h | 80,000 | 80,000 |  |
| 34 | 7 | Система разработана и внедрена | milestone | 0d | 2026-03-06 | 2026-03-06 | 33 | 2026-03-06 | 2026-03-06 | 0d | 0d |  |  |  |  |  |  |

Notes:
- 26: Описание риска: Превышено время, выделенное на эту задачу
- 27: Описание риска: Проблема интеграции системы с банковской системой
- 28: Описание риска: Проблема сохранности данных при сбоях серверов. А также вопросы маштабируемости и надежности
- 29: Описание риска: Нарушение требований безопасности с точки зрения фз о персональных данных
- 30: Описание риска: Сложности с выстраиванием правильных алгоритмов для системы
- 32: Описание риска: В системе возникают сбои из-за ошибок разработчиков
